# Информационна система за телекомуникационна компания

Schedule from MS Project XML, 2010-11-29 to 2011-02-08.

## Calendars

- Standard: Mon-Fri 08:00-12:00, 13:00-17:00; Sat-Sun off.

## Resources

| Resource | Group | Rate |
| --- | --- | --- |
| Unassigned |  |  |
| Мария Григорова | Ръководство/Дизайн | 10 |
| Валентина Динкова | Проектанти/Разработчици | 8 |
| Любомир Станков | DB guru | 6 |
| Ивайло Михайлов | Dev guru | 8 |
| Николай Варадинов | Разработчици | 6 |
| Станислав Трифонов | Разработчици | 6 |
| Емил Станчев | Разработчици | 6 |
| Човека Х | QA | 5 |
| Тестов сървър | Hardware |  |

## Schedule

| ID | WBS | Task | Duration | Start | Finish | Predecessors | Total slack | Free slack | Resources |
| --- | --- | --- | --- | --- | --- | --- | --- | --- | --- |
| 1 | 1 | **Създаване на информационна система за телекомуникационна компания** | 52d | 2010-11-29 | 2011-02-08 |  | 0d |  |  |
| 2 | 1.1 | Управление на проект | 51d | 2010-11-30 | 2011-02-08 | 57FF | 0d |  | Мария Григорова [40%] |
| 3 | 1.2 | **Планиране и документиране на проекта** | 5d | 2010-11-29 | 2010-12-03 |  | 0d |  |  |
| 4 | 1.2.1 | Осигуряване и подбор на екип | 1d | 2010-11-29 | 2010-11-29 |  | 400d | 0d | Мария Григорова |
| 5 | 1.2.2 | Осигуряване на капиталови ресурси | 5d | 2010-11-29 | 2010-12-03 |  | 0d |  | Мария Григорова |
| 6 | 1.2.3 | Изготвяне на спецификации | 3d | 2010-11-29 | 2010-12-01 |  | 200d | 0d | Мария Григорова; Валентина Динкова; Ивайло Михайлов |
| 7 | 1.3 | **Създаване на тестова среда** | 3d | 2010-12-06 | 2010-12-08 | 3 | 0d |  |  |
| 8 | 1.3.1 | Инсталация и конфигурация на тестови сървър | 1d | 2010-12-06 | 2010-12-06 |  | 0d |  | Тестов сървър; Ивайло Михайлов [70%] |
| 9 | 1.3.2 | Инсталация и конфигурация на тестова бази данни | 2d | 2010-12-07 | 2010-12-08 | 8 | 0d |  | Любомир Станков [70%]; Тестов сървър |
| 10 | 1.4 | **Разработка на системата** | 30d | 2010-12-09 | 2011-01-19 | 7 | 0d |  |  |
| 11 | 1.4.1 | **Управление на потребители** | 5d | 2010-12-09 | 2010-12-15 |  | 0d |  |  |
| 12 | 1.4.1.1 | **Бази данни** | 2d | 2010-12-09 | 2010-12-10 |  | 0d |  |  |
| 13 | 1.4.1.1.1 | Създаване на таблица за определяне на потребителски роли | 2d | 2010-12-09 | 2010-12-10 |  | 0d |  |  |
| 14 | 1.4.1.2 | **Потребителски интерфейс** | 4d | 2010-12-10 | 2010-12-15 | 12SS+1d | 0d |  |  |
| 15 | 1.4.1.2.1 | Реализация на прозорец за вход в системата | 4d | 2010-12-10 | 2010-12-15 |  | 0d |  |  |
| 16 | 1.4.1.3 | Тестване | 3d | 2010-12-13 | 2010-12-15 | 14SS+1d, 12SS | 0d |  |  |
| 17 | 1.4.2 | **Контрол над хардуерни компоненти** | 8d | 2010-12-15 | 2010-12-24 | 11FS-1d | 0d |  |  |
| 18 | 1.4.2.1 | **База данни** | 4d | 2010-12-15 | 2010-12-20 |  | 0d |  |  |
| 19 | 1.4.2.1.1 | Създаване на таблица за GPS устройства | 1d | 2010-12-15 | 2010-12-15 |  | 0d |  |  |
| 20 | 1.4.2.1.2 | Създаване на таблица за управление на влагани сим карти | 1d | 2010-12-16 | 2010-12-16 | 19 | 0d |  |  |
| 21 | 1.4.2.1.3 | Създаване на таблица за връзки между устрйство и сим карта | 1d | 2010-12-17 | 2010-12-17 | 20 | 0d |  |  |
| 22 | 1.4.2.1.4 | Създаване на заявки за управление на данните за хардуерните компоненти | 1d | 2010-12-20 | 2010-12-20 | 21 | 0d |  |  |
| 23 | 1.4.2.2 | **Потребителски интерфейс** | 6d | 2010-12-16 | 2010-12-23 | 18SS+1d | 0d |  |  |
| 24 | 1.4.2.2.1 | ПИ за управление на хардуерни компоненти | 6d | 2010-12-16 | 2010-12-23 |  | 0d |  |  |
| 25 | 1.4.2.3 | Тестване | 6d | 2010-12-17 | 2010-12-24 | 23SS+1d, 18SS | 0d |  |  |

| ID | WBS | Task | Duration | Start | Finish | Predecessors | Total slack | Free slack | Resources |
| --- | --- | --- | --- | --- | --- | --- | --- | --- | --- |
| 26 | 1.4.3 | **Компоненти на системата свързани с клиент** | 6d | 2010-12-24 | 2010-12-31 | 17FS-1d | 0d |  |  |
| 27 | 1.4.3.1 | **База данни** | 6d | 2010-12-24 | 2010-12-31 |  | 0d |  |  |
| 28 | 1.4.3.1.1 | Таблици с основна информация за клиент | 1d | 2010-12-24 | 2010-12-24 |  | 0d |  | Любомир Станков [70%] |
| 29 | 1.4.3.1.2 | Таблица за връзка между клиент и устройства | 1d | 2010-12-27 | 2010-12-27 | 28 | 0d |  | Любомир Станков [70%] |
| 30 | 1.4.3.1.3 | Таблица за обвързване на обекти с клиент | 1d | 2010-12-28 | 2010-12-28 | 29 | 0d |  | Любомир Станков [70%]; Ивайло Михайлов |
| 31 | 1.4.3.1.4 | Заявки за извличане на информация | 2d | 2010-12-29 | 2010-12-30 | 30 | 100d | 0d | Ивайло Михайлов [20%]; Любомир Станков [50%] |
| 32 | 1.4.3.1.5 | Функции, тригери, индекси | 3d | 2010-12-29 | 2010-12-31 | 30 | 0d |  | Ивайло Михайлов [30%]; Любомир Станков [30%] |
| 33 | 1.4.3.2 | **Потребителски интерфейс** | 4d | 2010-12-24 | 2010-12-29 | 27SS | 100d | 0d |  |
| 34 | 1.4.3.2.1 | Проектиране и дизайн на ПИ | 3d | 2010-12-24 | 2010-12-28 |  | 100d | 0d | Валентина Динкова [70%] |
| 35 | 1.4.3.2.2 | ПИ за профил на клиент | 2d | 2010-12-27 | 2010-12-28 | 34SS+1d | 200d | 0d | Станислав Трифонов [70%] |
| 36 | 1.4.3.2.3 | ПИ за обвързване на обект и устройство с клиент | 2d | 2010-12-27 | 2010-12-28 | 34SS+1d | 200d | 0d | Николай Варадинов [70%] |
| 37 | 1.4.3.2.4 | ПИ за въвеждане и разглеждане на коментари | 2d | 2010-12-27 | 2010-12-28 | 34SS+1d | 200d | 0d | Емил Станчев [70%] |
| 38 | 1.4.3.2.5 | ПИ за управление на клиенти | 3d | 2010-12-27 | 2010-12-29 | 34SS+1d | 100d | 0d | Ивайло Михайлов [50%] |
| 39 | 1.4.3.3 | **Тестване** | 3d | 2010-12-28 | 2010-12-30 | 33SS+2d, 27SS | 100d | 0d |  |
| 40 | 1.4.3.3.1 | Проверка за изпълнение на изискванията | 3d | 2010-12-28 | 2010-12-30 |  | 100d | 0d | Човека Х [20%] |
| 41 | 1.4.3.3.2 | Тестване на функционалност | 3d | 2010-12-28 | 2010-12-30 |  | 100d | 0d | Човека Х [30%] |
| 42 | 1.4.3.3.3 | Тестване на бързодействие | 3d | 2010-12-28 | 2010-12-30 |  | 100d | 0d | Човека Х [20%] |
| 43 | 1.4.4 | **Система за тикети** | 10d | 2010-12-31 | 2011-01-13 | 26FS-1d | 0d |  |  |
| 44 | 1.4.4.1 | База данни | 8d | 2010-12-31 | 2011-01-11 |  | 0d |  |  |
| 45 | 1.4.4.2 | Потребителски интерфейс | 8d | 2011-01-03 | 2011-01-12 | 44SS+1d | 0d |  |  |
| 46 | 1.4.4.3 | Тестване | 4d | 2011-01-10 | 2011-01-13 | 45SS+5d, 44SS | 0d |  |  |
| 47 | 1.4.5 | **Справки** | 5d | 2011-01-13 | 2011-01-19 | 43FS-1d | 0d |  |  |
| 48 | 1.4.5.1 | Заявки към базата данни | 3d | 2011-01-13 | 2011-01-17 |  | 0d |  |  |
| 49 | 1.4.5.2 | Потребителски интерфейс | 3d | 2011-01-14 | 2011-01-18 | 48SS+1d | 0d |  |  |
| 50 | 1.4.5.3 | Тестване | 3d | 2011-01-17 | 2011-01-19 | 49SS+1d, 48SS | 0d |  |  |
| 51 | 1.5 | Интеграция на счетоводен модул | 3d | 2011-01-20 | 2011-01-24 | 10 | 0d |  |  |

| ID | WBS | Task | Duration | Start | Finish | Predecessors | Total slack | Free slack |
| --- | --- | --- | --- | --- | --- | --- | --- | --- |
| 52 | 1.6 | **Тест на цялата система** | 2d | 2011-01-25 | 2011-01-26 | 51 | 0d |  |
| 53 | 1.6.1 | Проверка за изпълнение на изискванията | 2d | 2011-01-25 | 2011-01-26 |  | 0d |  |
| 54 | 1.6.2 | Тестване на функционалността | 2d | 2011-01-25 | 2011-01-26 |  | 0d |  |
| 55 | 1.6.3 | Тестване на бързодействието | 2d | 2011-01-25 | 2011-01-26 |  | 0d |  |
| 56 | 1.6.4 | Отстраняване на възникнали проблеми | 2d | 2011-01-25 | 2011-01-26 |  | 0d |  |
| 57 | 1.7 | **Внедряване на системата** | 9d | 2011-01-27 | 2011-02-08 | 52, 10, 51 | 0d |  |
| 58 | 1.7.1 | Инсталация при клиент | 2d | 2011-01-27 | 2011-01-28 |  | 0d |  |
| 59 | 1.7.2 | Финален тест | 2d | 2011-01-31 | 2011-02-01 | 58 | 0d |  |
| 60 | 1.7.3 | Отстраняване на евентуални проблеми | 5d | 2011-01-31 | 2011-02-04 | 59SS | 200d | 0d |
| 61 | 1.7.4 | Обучение | 5d | 2011-02-02 | 2011-02-08 | 59 | 0d |  |
